# 图6.4 国产外挂装置研制进度安排

How a schedule from MS Project changed from version to version. A marks actual dates.

## Version 1 (saved 2005-12-08, file 图5.3 国产外挂装置研制进度安排.mpp)

Note of the change: PM

| ID | WBS | Task | Duration | Start | Finish | Predecessors | Total float | Constraint |
| --- | --- | --- | --- | --- | --- | --- | --- | --- |
| 1 |  | 武器挂架研制 | 0d | 1999-06-04 | 1999-06-04 |  | 18d | start no earlier than 1999-06-04 |
| 2 | 2 | **研制** | 77d | 1999-06-04 | 1999-09-20 | 1 | 18d |  |
| 3 | 2.1 | **机身挂架** | 77d | 1999-06-04 | 1999-09-20 |  | 26d |  |
| 4 | 2.1.1 | **技术状态** | 37d | 1999-06-04 | 1999-07-26 |  | 0d |  |
| 5 |  | 机身接口取样 | 7d | 1999-07-12 | 1999-07-20 |  | 0d | start no earlier than 1999-07-12 |
| 6 |  | 对俄挂架分析 | 7d | 1999-06-04 | 1999-06-14 |  | 26d | finish no earlier than 1999-06-14 |
| 7 |  | 确定设计参数 | 4d | 1999-07-21 | 1999-07-26 | 5, 6 | 0d | start no earlier than 1999-05-16 |
| 8 | 2.1.2 | **设计** | 16d | 1999-07-27 | 1999-08-17 |  | 0d |  |
| 9 |  | 图样设计 | 11d | 1999-07-27 | 1999-08-10 | 7 | 0d | start no earlier than 1999-07-27 |
| 10 |  | 工艺规程 | 5d | 1999-08-11 | 1999-08-17 | 9 | 98d |  |
| 11 |  | 工装设计 | 5d | 1999-08-11 | 1999-08-17 | 9 | 0d |  |
| 12 | 2.1.3 | **试制试验** | 24d | 1999-08-18 | 1999-09-20 |  | 0d |  |
| 13 |  | 产品试制 | 20d | 1999-08-18 | 1999-09-14 | 11 | 0d | finish no earlier than 1999-09-14 |
| 14 |  | 地面试验 | 4d | 1999-09-15 | 1999-09-20 | 13 | 0d | start no earlier than 1999-09-15 |
| 15 | 2.2 | **通用挂梁** | 59d | 1999-06-04 | 1999-08-25 |  | 18d |  |
| 16 | 2.2.1 | **技术状态** | 7d | 1999-06-04 | 1999-06-14 |  | 18d |  |
| 17 |  | 对俄挂梁分析 | 7d | 1999-06-04 | 1999-06-14 |  | 18d |  |
| 18 |  | 确定设计参数 | 5d | 1999-06-04 | 1999-06-10 |  | 20d |  |
| 19 | 2.2.2 | **设计** | 21d | 1999-06-15 | 1999-07-13 |  | 18d |  |
| 20 |  | 图样设计 | 11d | 1999-06-15 | 1999-06-29 | 17, 18 | 18d |  |
| 21 |  | 工艺规程 | 5d | 1999-06-30 | 1999-07-06 | 20 | 18d |  |
| 22 |  | 工装设计 | 5d | 1999-07-07 | 1999-07-13 | 21 | 18d |  |
| 23 | 2.2.3 | **试制试验** | 31d | 1999-07-14 | 1999-08-25 |  | 18d |  |
| 24 |  | 产品试制 | 20d | 1999-07-14 | 1999-08-10 | 22 | 18d |  |
| 25 |  | 地面试验 | 11d | 1999-08-11 | 1999-08-25 | 24 | 18d |  |
| 26 | 3 | **试验** | 49d | 1999-09-21 | 1999-11-26 | 1 | 0d |  |
| 27 |  | 首架机改装 | 24d | 1999-09-21 | 1999-10-22 | 25, 14 | 0d |  |
| 28 |  | 空飞试验 | 20d | 1999-10-25 | 1999-11-19 | 27 | 0d |  |
| 29 |  | 设计定型 | 5d | 1999-11-22 | 1999-11-26 | 28 | 0d |  |
| 30 |  | 交付 | 25d | 1999-11-29 | 1999-12-31 | 29 | 0d | start no earlier than 1999-11-29 |

## Version 2 (saved 2005-12-08, file 图5.4 国产外挂装置研制进展情况.mpp)

Note of the change: PM

Last finish stays 1999-12-31. Complete tasks 0 → 15.

Changed:

| ID | Task | Start | Finish | Complete | Total float |
| --- | --- | --- | --- | --- | --- |
| 2 | **研制** | 1999-06-04 A | 1999-09-20 A | 0% → 100% | 18d → none |
| 3 | **机身挂架** | 1999-06-04 A | 1999-09-20 A | 0% → 100% | 26d → none |
| 4 | **技术状态** | 1999-06-04 A | 1999-07-26 A | 0% → 100% | 0d → none |
| 5 | 机身接口取样 | 1999-07-12 A | 1999-07-20 A | 0% → 100% | 0d → none |
| 6 | 对俄挂架分析 | 1999-06-04 A | 1999-06-14 A | 0% → 100% | 26d → none |
| 7 | 确定设计参数 | 1999-07-21 A | 1999-07-26 A | 0% → 100% | 0d → none |
| 8 | **设计** | 1999-07-27 A | 1999-08-17 A | 0% → 100% | 0d → none |
| 9 | 图样设计 | 1999-07-27 A | 1999-08-10 A | 0% → 100% | 0d → none |
| 10 | 工艺规程 | 1999-08-11 A | 1999-08-17 A | 0% → 100% | 98d → none |
| 11 | 工装设计 | 1999-08-11 A | 1999-08-17 A | 0% → 100% | 0d → none |
| 12 | **试制试验** | 1999-08-18 A | 1999-09-20 A | 0% → 100% | 0d → none |
| 13 | 产品试制 | 1999-08-18 A | 1999-09-14 A | 0% → 100% | 0d → none |
| 14 | 地面试验 | 1999-09-15 A | 1999-09-20 A | 0% → 100% | 0d → none |
| 15 | **通用挂梁** | 1999-06-04 A | 1999-08-25 A | 0% → 100% | 18d → none |
| 16 | **技术状态** | 1999-06-04 A | 1999-06-14 A | 0% → 100% | 18d → none |
| 17 | 对俄挂梁分析 | 1999-06-04 A | 1999-06-14 A | 0% → 100% | 18d → none |
| 18 | 确定设计参数 | 1999-06-04 A | 1999-06-10 A | 0% → 100% | 20d → none |
| 19 | **设计** | 1999-06-15 A | 1999-07-13 A | 0% → 100% | 18d → none |
| 20 | 图样设计 | 1999-06-15 A | 1999-06-29 A | 0% → 100% | 18d → none |
| 21 | 工艺规程 | 1999-06-30 A | 1999-07-06 A | 0% → 100% | 18d → none |
| 22 | 工装设计 | 1999-07-07 A | 1999-07-13 A | 0% → 100% | 18d → none |
| 23 | **试制试验** | 1999-07-14 A | 1999-08-25 A | 0% → 100% | 18d → none |
| 24 | 产品试制 | 1999-07-14 A | 1999-08-10 A | 0% → 100% | 18d → none |
| 25 | 地面试验 | 1999-08-11 A | 1999-08-25 A | 0% → 100% | 18d → none |
| 26 | **试验** | 1999-09-21 A |  | 0% → 39% |  |
| 27 | 首架机改装 | 1999-09-21 A |  | 0% → 80% |  |
