# mi-17项目甘特图

How a schedule from MS Project changed from version to version. A marks actual dates.

## Version 1 (saved 2005-12-08, file 图3.3某直升机改装项目-调整后.mpp)

Note of the change: PM

| ID | WBS | Task | Duration | Start | Finish | Predecessors | Total float |
| --- | --- | --- | --- | --- | --- | --- | --- |
| 1 | 11000 | **组建项目办** | 11d | 1999-04-01 | 1999-04-15 |  | 0d |
| 2 |  | 成立项目办机构 | 6d | 1999-04-01 | 1999-04-08 |  | 0d |
| 3 |  | 研究配置人员 | 5d | 1999-04-09 | 1999-04-15 | 2 | 0d |
| 4 |  | 购置办公设备 | 5d | 1999-04-01 | 1999-04-07 |  | 6d |
| 5 |  | 编制办公制度 | 4d | 1999-04-01 | 1999-04-06 |  | 7d |
| 6 | 21000 | **签订武器挂架合同** | 23d | 1999-04-16 | 1999-05-18 | 1 | 75d |
| 7 |  | 挂架引进与国产化利弊分析 | 5d | 1999-04-16 | 1999-04-22 |  | 75d |
| 8 |  | 决策引进或国产化 | 5d | 1999-04-23 | 1999-04-29 | 7 | 75d |
| 9 |  | 成本调研与价格协商 | 8d | 1999-04-30 | 1999-05-11 | 8 | 75d |
| 10 |  | 签订合同 | 5d | 1999-05-12 | 1999-05-18 | 9 | 75d |
| 11 | 22000 | **技术服务合同** | 25d | 1999-04-16 | 1999-05-20 | 1 | 104d |
| 12 |  | 技术服务内容界定 | 10d | 1999-04-16 | 1999-04-29 |  | 104d |
| 13 |  | 费用商定 | 10d | 1999-04-30 | 1999-05-13 | 12 | 104d |
| 14 |  | 签订合同 | 5d | 1999-05-14 | 1999-05-20 | 13 | 104d |
| 15 | 23000 | **国内成品合同** | 38d | 1999-04-16 | 1999-06-08 | 1 | 0d |
| 16 |  | 成本调研 | 30d | 1999-04-16 | 1999-05-27 |  | 0d |
| 17 |  | 价格协商 | 5d | 1999-05-28 | 1999-06-03 | 16 | 0d |
| 18 |  | 合同签订 | 3d | 1999-06-04 | 1999-06-08 | 17 | 0d |
| 19 | 31000 | **冻结技术状态** | 15d | 1999-05-21 | 1999-06-10 | 11 | 104d |
| 20 |  | 机轮罩设计方案 | 1d | 1999-05-21 | 1999-05-21 |  | 118d |
| 21 |  | 导光板设计改进 | 10d | 1999-05-21 | 1999-06-03 |  | 109d |
| 22 |  | 操纵板设计改进 | 15d | 1999-05-21 | 1999-06-10 |  | 104d |
| 23 |  | 产品可靠性指标 | 10d | 1999-05-21 | 1999-06-03 |  | 109d |
| 24 |  | 火箭控制电路与PC-1吊舱、32管火发器协调 | 15d | 1999-05-21 | 1999-06-10 |  | 104d |
| 25 | 32000 | **成品验收** | 5d | 2000-01-05 | 2000-01-11 | 82, 83 | 0d |
| 26 |  | KB-1验收 | 2d | 2000-01-05 | 2000-01-06 |  | 3d |
| 27 |  | SMZZ-1验收 | 3d | 2000-01-05 | 2000-01-07 |  | 2d |
| 28 |  | WIY-1验收 | 5d | 2000-01-05 | 2000-01-11 |  | 0d |
| 29 |  | JBZZ-1验收 | 4d | 2000-01-05 | 2000-01-10 |  | 1d |
| 30 |  | GDG-II11验收 | 2d | 2000-01-05 | 2000-01-06 |  | 3d |
| 31 |  | GDL-II1验收 | 2d | 2000-01-05 | 2000-01-06 |  | 3d |
| 32 |  | HF-25G验收 | 2d | 2000-01-05 | 2000-01-06 |  | 3d |
| 33 |  | 武器挂架验收 | 2d | 2000-01-05 | 2000-01-06 |  | 3d |
| 34 | 33000 | **编制文件** | 40d | 1999-05-21 | 1999-07-15 | 11 | 155d |
| 35 |  | 飞行员手册 | 15d | 1999-05-21 | 1999-06-10 |  | 155d |
| 36 |  | 地勤维护手册 | 15d | 1999-06-11 | 1999-07-01 | 35 | 155d |
| 37 |  | 试飞大纲 | 5d | 1999-07-02 | 1999-07-08 | 36 | 155d |
| 38 |  | 靶试大纲 | 5d | 1999-07-09 | 1999-07-15 | 37 | 155d |
| 39 | 8 | **协调工作** | 304d | 1999-07-13 | 2000-09-08 |  | 0d |
| 40 |  | 资源调查 | 5d | 1999-07-13 | 1999-07-19 | 1, 49, 53 | 104d |
| 41 |  | 组建改装团队 | 15d | 1999-07-20 | 1999-08-09 | 6, 11, 15, 40 | 104d |
| 42 | 8.3 | **部队协调** | 180d | 2000-01-03 | 2000-09-08 |  | 0d |
| 43 |  | A团协调 | 7d | 2000-01-03 | 2000-01-11 | 25FF, 41 | 0d |
| 44 |  | B团协调 | 7d | 2000-02-14 | 2000-02-22 | 76FF | 0d |
| 45 |  | C团协调 | 7d | 2000-05-08 | 2000-05-16 | 77FF | 0d |
| 46 |  | D团协调 | 7d | 2000-05-22 | 2000-05-30 | 45, 78FF | 0d |
| 47 |  | E团协调 | 7d | 2000-06-22 | 2000-06-30 | 46, 79FF | 0d |
| 48 |  | F团协调 | 7d | 2000-08-31 | 2000-09-08 | 47, 80FF | 0d |
| 49 | 51000 | **路线优化** | 20d | 1999-04-16 | 1999-05-13 | 1 | 146d |
| 50 |  | 计算各部队距离 | 5d | 1999-04-16 | 1999-04-22 |  | 146d |
| 51 |  | 计算路线 | 10d | 1999-04-23 | 1999-05-06 | 50 | 146d |
| 52 |  | 分析得出最优路线 | 5d | 1999-05-07 | 1999-05-13 | 51 | 146d |
| 53 | 52000 | **工序优化** | 22d | 1999-06-11 | 1999-07-12 | 19 | 104d |
| 54 |  | 改装工序结构分解 | 5d | 1999-06-11 | 1999-06-17 |  | 104d |
| 55 |  | 建立工序逻辑关系 | 5d | 1999-06-18 | 1999-06-24 | 54 | 104d |
| 56 |  | 计算各工序时间 | 5d | 1999-06-25 | 1999-07-01 | 55 | 104d |
| 57 |  | 得出关键线路 | 4d | 1999-07-02 | 1999-07-07 | 56 | 104d |
| 58 |  | 进行工序优化 | 3d | 1999-07-08 | 1999-07-12 | 57 | 104d |
| 59 | 11 | **改装实施** | 223d | 2000-01-12 | 2000-11-17 |  | 0d |
| 60 |  | A部队改装 | 30d | 2000-01-12 | 2000-02-22 | 43 | 0d |
| 61 |  | B部队改装 | 60d | 2000-02-23 | 2000-05-16 | 44, 60 | 0d |
| 62 |  | C部队改装 | 10d | 2000-05-17 | 2000-05-30 | 45, 61 | 0d |
| 63 |  | D部队改装 | 20d | 2000-05-31 | 2000-06-27 | 46, 62 | 0d |
| 64 |  | E部队改装 | 50d | 2000-07-03 | 2000-09-08 | 47, 63 | 0d |
| 65 |  | F部队改装 | 50d | 2000-09-11 | 2000-11-17 | 48, 64 | 0d |
| 66 | 54000 | **改装结束** | 1d | 2000-11-20 | 2000-11-20 | 81 | 0d |
| 67 |  | 技术绩效 | 1d | 2000-11-20 | 2000-11-20 |  | 0d |
| 68 |  | 成本绩效 | 1d | 2000-11-20 | 2000-11-20 |  | 0d |
| 69 |  | 进度计划绩效 | 1d | 2000-11-20 | 2000-11-20 |  | 0d |
| 70 |  | 客户联系 | 1d | 2000-11-20 | 2000-11-20 |  | 0d |

| ID | WBS | Task | Duration | Start | Finish | Predecessors | Total float |
| --- | --- | --- | --- | --- | --- | --- | --- |
| 71 |  | 团队联系 | 1d | 2000-11-20 | 2000-11-20 |  | 0d |
| 72 |  | 交流 | 1d | 2000-11-20 | 2000-11-20 |  | 0d |
| 73 |  | 识别问题与解决问题 | 1d | 2000-11-20 | 2000-11-20 |  | 0d |
| 74 |  | 对未来项目的建议 | 1d | 2000-11-20 | 2000-11-20 |  | 0d |
| 75 | 13 | **机务、飞行员培训** | 196d | 2000-02-18 | 2000-11-17 |  | 0d |
| 76 |  | A团培训 | 3d | 2000-02-18 | 2000-02-22 | 34, 60FF | 0d |
| 77 |  | B团培训 | 3d | 2000-05-12 | 2000-05-16 | 61FF | 0d |
| 78 |  | C团培训 | 3d | 2000-05-26 | 2000-05-30 | 62FF | 0d |
| 79 |  | D团培训 | 3d | 2000-06-28 | 2000-06-30 | 63 | 0d |
| 80 |  | E团培训 | 3d | 2000-09-06 | 2000-09-08 | 64FF | 0d |
| 81 |  | F团培训 | 3d | 2000-11-15 | 2000-11-17 | 65FF | 0d |
| 82 |  | 武器挂架交付 | 90d | 1999-05-19 | 1999-09-21 | 6 | 75d |
| 83 | 72000 | **国内成品交付** | 150d | 1999-06-09 | 2000-01-04 | 15 | 0d |
| 84 |  | KB-1交付 | 150d | 1999-06-09 | 2000-01-04 |  | 0d |
| 85 |  | SMZZ-1交付 | 150d | 1999-06-09 | 2000-01-04 |  | 0d |
| 86 |  | JBZZ-1交付 | 150d | 1999-06-09 | 2000-01-04 |  | 0d |
| 87 |  | WJY-1交付 | 150d | 1999-06-09 | 2000-01-04 |  | 0d |
| 88 |  | GDG-II11交付 | 150d | 1999-06-09 | 2000-01-04 |  | 0d |
| 89 |  | GDL-II1交付 | 150d | 1999-06-09 | 2000-01-04 |  | 0d |
| 90 |  | HF-25G交付 | 150d | 1999-06-09 | 2000-01-04 |  | 0d |

## Version 2 (saved 2005-12-10, file 图3.2某直升机改装项目图.mpp)

Note of the change: PM

Last finish 2000-11-20 → 2001-04-18 (+149d).

Changed:

| ID | Task | Start | Finish | Duration | Predecessors |
| --- | --- | --- | --- | --- | --- |
| 25 | **成品验收** | 2000-01-05 → 2000-03-15 (+70d) | 2000-01-11 → 2000-03-21 (+70d) |  |  |
| 26 | KB-1验收 | 2000-01-05 → 2000-03-15 (+70d) | 2000-01-06 → 2000-03-16 (+70d) |  |  |
| 27 | SMZZ-1验收 | 2000-01-05 → 2000-03-15 (+70d) | 2000-01-07 → 2000-03-17 (+70d) |  |  |
| 28 | WIY-1验收 | 2000-01-05 → 2000-03-15 (+70d) | 2000-01-11 → 2000-03-21 (+70d) |  |  |
| 29 | JBZZ-1验收 | 2000-01-05 → 2000-03-15 (+70d) | 2000-01-10 → 2000-03-20 (+70d) |  |  |
| 30 | GDG-II11验收 | 2000-01-05 → 2000-03-15 (+70d) | 2000-01-06 → 2000-03-16 (+70d) |  |  |
| 31 | GDL-II1验收 | 2000-01-05 → 2000-03-15 (+70d) | 2000-01-06 → 2000-03-16 (+70d) |  |  |
| 32 | HF-25G验收 | 2000-01-05 → 2000-03-15 (+70d) | 2000-01-06 → 2000-03-16 (+70d) |  |  |
| 33 | 武器挂架验收 | 2000-01-05 → 2000-03-15 (+70d) | 2000-01-06 → 2000-03-16 (+70d) |  |  |
| 39 | **协调工作** |  | 2000-09-08 → 2001-02-01 (+146d) | 304d → 408d |  |
| 42 | **部队协调** | 2000-01-03 → 2000-03-22 (+79d) | 2000-09-08 → 2001-02-01 (+146d) | 180d → 227d |  |
| 43 | A团协调 | 2000-01-03 → 2000-03-22 (+79d) | 2000-01-11 → 2000-03-30 (+79d) |  | 25FF, 41 → 25, 41 |
| 44 | B团协调 | 2000-02-14 → 2000-05-17 (+93d) | 2000-02-22 → 2000-05-25 (+93d) |  | 76FF → 76 |
| 45 | C团协调 | 2000-05-08 → 2000-08-23 (+107d) | 2000-05-16 → 2000-08-31 (+107d) |  | 77FF → 77 |
| 46 | D团协调 | 2000-05-22 → 2000-09-20 (+121d) | 2000-05-30 → 2000-09-28 (+121d) |  | 45, 78FF → 45, 78 |
| 47 | E团协调 | 2000-06-22 → 2000-11-01 (+132d) | 2000-06-30 → 2000-11-09 (+132d) |  | 46, 79FF → 46, 79 |
| 48 | F团协调 | 2000-08-31 → 2001-01-24 (+146d) | 2000-09-08 → 2001-02-01 (+146d) |  | 47, 80FF → 47, 80 |
| 59 | **改装实施** | 2000-01-12 → 2000-03-31 (+79d) | 2000-11-17 → 2001-04-12 (+146d) | 223d → 270d |  |
| 60 | A部队改装 | 2000-01-12 → 2000-03-31 (+79d) | 2000-02-22 → 2000-05-11 (+79d) |  |  |
| 61 | B部队改装 | 2000-02-23 → 2000-05-26 (+93d) | 2000-05-16 → 2000-08-17 (+93d) |  |  |
| 62 | C部队改装 | 2000-05-17 → 2000-09-01 (+107d) | 2000-05-30 → 2000-09-14 (+107d) |  |  |
| 63 | D部队改装 | 2000-05-31 → 2000-09-29 (+121d) | 2000-06-27 → 2000-10-26 (+121d) |  |  |
| 64 | E部队改装 | 2000-07-03 → 2000-11-10 (+130d) | 2000-09-08 → 2001-01-18 (+132d) |  |  |
| 65 | F部队改装 | 2000-09-11 → 2001-02-02 (+144d) | 2000-11-17 → 2001-04-12 (+146d) |  |  |
| 66 | **改装结束** | 2000-11-20 → 2001-04-18 (+149d) | 2000-11-20 → 2001-04-18 (+149d) |  |  |
| 67 | 技术绩效 | 2000-11-20 → 2001-04-18 (+149d) | 2000-11-20 → 2001-04-18 (+149d) |  |  |
| 68 | 成本绩效 | 2000-11-20 → 2001-04-18 (+149d) | 2000-11-20 → 2001-04-18 (+149d) |  |  |
| 69 | 进度计划绩效 | 2000-11-20 → 2001-04-18 (+149d) | 2000-11-20 → 2001-04-18 (+149d) |  |  |
| 70 | 客户联系 | 2000-11-20 → 2001-04-18 (+149d) | 2000-11-20 → 2001-04-18 (+149d) |  |  |
| 71 | 团队联系 | 2000-11-20 → 2001-04-18 (+149d) | 2000-11-20 → 2001-04-18 (+149d) |  |  |
| 72 | 交流 | 2000-11-20 → 2001-04-18 (+149d) | 2000-11-20 → 2001-04-18 (+149d) |  |  |
| 73 | 识别问题与解决问题 | 2000-11-20 → 2001-04-18 (+149d) | 2000-11-20 → 2001-04-18 (+149d) |  |  |
| 74 | 对未来项目的建议 | 2000-11-20 → 2001-04-18 (+149d) | 2000-11-20 → 2001-04-18 (+149d) |  |  |
| 75 | **机务、飞行员培训** | 2000-02-18 → 2000-05-12 (+84d) | 2000-11-17 → 2001-04-17 (+151d) | 196d → 243d |  |
| 76 | A团培训 | 2000-02-18 → 2000-05-12 (+84d) | 2000-02-22 → 2000-05-16 (+84d) |  | 34, 60FF → 34, 60 |
| 77 | B团培训 | 2000-05-12 → 2000-08-18 (+98d) | 2000-05-16 → 2000-08-22 (+98d) |  | 61FF → 61 |
| 78 | C团培训 | 2000-05-26 → 2000-09-15 (+112d) | 2000-05-30 → 2000-09-19 (+112d) |  | 62FF → 62 |
| 79 | D团培训 | 2000-06-28 → 2000-10-27 (+121d) | 2000-06-30 → 2000-10-31 (+123d) |  |  |
| 80 | E团培训 | 2000-09-06 → 2001-01-19 (+135d) | 2000-09-08 → 2001-01-23 (+137d) |  | 64FF → 64 |
| 81 | F团培训 | 2000-11-15 → 2001-04-13 (+149d) | 2000-11-17 → 2001-04-17 (+151d) |  | 65FF → 65 |
| 83 | **国内成品交付** |  | 2000-01-04 → 2000-03-14 (+70d) | 150d → 200d |  |
| 84 | KB-1交付 |  | 2000-01-04 → 2000-03-14 (+70d) | 150d → 200d |  |
| 85 | SMZZ-1交付 |  | 2000-01-04 → 2000-03-14 (+70d) | 150d → 200d |  |
| 86 | JBZZ-1交付 |  | 2000-01-04 → 2000-03-14 (+70d) | 150d → 200d |  |
| 87 | WJY-1交付 |  | 2000-01-04 → 2000-03-14 (+70d) | 150d → 200d |  |
| 88 | GDG-II11交付 |  | 2000-01-04 → 2000-03-14 (+70d) | 150d → 200d |  |
| 89 | GDL-II1交付 |  | 2000-01-04 → 2000-03-14 (+70d) | 150d → 200d |  |
| 90 | HF-25G交付 |  | 2000-01-04 → 2000-03-14 (+70d) | 150d → 200d |  |

## Version 3 (saved 2007-06-02, file 图5.1某直升机改装项目进展报告.mpp)

Note of the change: PM

Last finish 2001-04-18 → 2000-11-03 (-166d). Complete tasks 0 → 33.

Changed:

| ID | Task | Start | Finish | Duration | Complete | Total float | Predecessors | Other |
| --- | --- | --- | --- | --- | --- | --- | --- | --- |
| 1 | **组建项目办** | 1999-04-01 A | 1999-04-15 A |  | 0% → 100% | 0d → none |  | baseline finish 1999-04-01 → 1999-04-15 |
| 2 | 成立项目办机构 | 1999-04-01 A | 1999-04-08 A |  | 0% → 100% | 0d → none |  | baseline finish 1999-04-01 → 1999-04-08 |
| 3 | 研究配置人员 | 1999-04-09 A | 1999-04-15 A |  | 0% → 100% | 0d → none |  | baseline start 1999-04-01 → 1999-04-09; baseline finish 1999-04-01 → 1999-04-15 |
| 4 | 购置办公设备 | 1999-04-01 A | 1999-04-07 A |  | 0% → 100% | 6d → none |  | baseline finish 1999-04-01 → 1999-04-07 |
| 5 | 编制办公制度 | 1999-04-01 A | 1999-04-06 A |  | 0% → 100% | 7d → none |  | baseline finish 1999-04-01 → 1999-04-06 |
| 6 | **签订武器挂架合同** | 1999-04-16 → 1999-04-01 A (-15d) | 1999-05-18 → 1999-05-03 A (-15d) |  | 0% → 100% | 125d → none |  | baseline finish 1999-04-01 → 1999-05-03 |
| 7 | 挂架引进与国产化利弊分析 | 1999-04-16 → 1999-04-01 A (-15d) | 1999-04-22 → 1999-04-07 A (-15d) |  | 0% → 100% | 125d → none |  | baseline finish 1999-04-01 → 1999-04-07 |
| 8 | 决策引进或国产化 | 1999-04-23 → 1999-04-08 A (-15d) | 1999-04-29 → 1999-04-14 A (-15d) |  | 0% → 100% | 125d → none |  | baseline start 1999-04-01 → 1999-04-08; baseline finish 1999-04-01 → 1999-04-14 |
| 9 | 成本调研与价格协商 | 1999-04-30 → 1999-04-15 A (-15d) | 1999-05-11 → 1999-04-26 A (-15d) |  | 0% → 100% | 125d → none |  | baseline start 1999-04-01 → 1999-04-15; baseline finish 1999-04-01 → 1999-04-26 |
| 10 | 签订合同 | 1999-05-12 → 1999-04-27 A (-15d) | 1999-05-18 → 1999-05-03 A (-15d) |  | 0% → 100% | 125d → none |  | baseline start 1999-04-01 → 1999-04-27; baseline finish 1999-04-01 → 1999-05-03 |
| 11 | **技术服务合同** | 1999-04-16 → 1999-04-01 A (-15d) | 1999-05-20 → 1999-05-05 A (-15d) |  | 0% → 100% | 161d → none |  | baseline finish 1999-04-01 → 1999-05-05 |
| 12 | 技术服务内容界定 | 1999-04-16 → 1999-04-01 A (-15d) | 1999-04-29 → 1999-04-14 A (-15d) |  | 0% → 100% | 161d → none |  | baseline finish 1999-04-01 → 1999-04-14 |
| 13 | 费用商定 | 1999-04-30 → 1999-04-15 A (-15d) | 1999-05-13 → 1999-04-28 A (-15d) |  | 0% → 100% | 161d → none |  | baseline start 1999-04-01 → 1999-04-15; baseline finish 1999-04-01 → 1999-04-28 |
| 14 | 签订合同 | 1999-05-14 → 1999-04-29 A (-15d) | 1999-05-20 → 1999-05-05 A (-15d) |  | 0% → 100% | 161d → none |  | baseline start 1999-04-01 → 1999-04-29; baseline finish 1999-04-01 → 1999-05-05 |
| 15 | **国内成品合同** | 1999-04-16 → 1999-04-01 A (-15d) | 1999-06-08 → 1999-05-24 A (-15d) |  | 0% → 100% | 0d → none |  | baseline finish 1999-04-01 → 1999-05-24 |
| 16 | 成本调研 | 1999-04-16 → 1999-04-01 A (-15d) | 1999-05-27 → 1999-05-12 A (-15d) |  | 0% → 100% | 0d → none |  | baseline finish 1999-04-01 → 1999-05-12 |
| 17 | 价格协商 | 1999-05-28 → 1999-05-13 A (-15d) | 1999-06-03 → 1999-05-19 A (-15d) |  | 0% → 100% | 0d → none |  | baseline start 1999-04-01 → 1999-05-13; baseline finish 1999-04-01 → 1999-05-19 |
| 18 | 合同签订 | 1999-06-04 → 1999-05-20 A (-15d) | 1999-06-08 → 1999-05-24 A (-15d) |  | 0% → 100% | 0d → none |  | baseline start 1999-04-01 → 1999-05-20; baseline finish 1999-04-01 → 1999-05-24 |
| 19 | **冻结技术状态** | 1999-05-21 → 1999-04-01 A (-50d) | 1999-06-10 → 1999-04-21 A (-50d) |  | 0% → 100% | 161d → none |  | baseline finish 1999-04-01 → 1999-04-21 |
| 20 | 机轮罩设计方案 | 1999-05-21 → 1999-04-01 A (-50d) | 1999-05-21 → 1999-04-01 A (-50d) |  | 0% → 100% | 175d → none |  |  |
| 21 | 导光板设计改进 | 1999-05-21 → 1999-04-01 A (-50d) | 1999-06-03 → 1999-04-14 A (-50d) |  | 0% → 100% | 166d → none |  | baseline start 1999-05-21 → 1999-04-01; baseline finish 1999-06-03 → 1999-04-14 |
| 22 | 操纵板设计改进 | 1999-05-21 → 1999-04-01 A (-50d) | 1999-06-10 → 1999-04-21 A (-50d) |  | 0% → 100% | 161d → none |  | baseline finish 1999-04-01 → 1999-04-21 |
| 23 | 产品可靠性指标 | 1999-05-21 → 1999-04-01 A (-50d) | 1999-06-03 → 1999-04-14 A (-50d) |  | 0% → 100% | 166d → none |  | baseline finish 1999-04-01 → 1999-04-14 |
| 24 | 火箭控制电路与PC-1吊舱、32管火发器协调 | 1999-05-21 → 1999-04-01 A (-50d) | 1999-06-10 → 1999-04-21 A (-50d) |  | 0% → 100% | 161d → none |  | baseline finish 1999-04-01 → 1999-04-21 |
| 25 | **成品验收** | 2000-03-15 → 1999-12-21 A (-85d) | 2000-03-21 → 1999-12-27 (-85d) |  | 0% → 81% |  |  | baseline start 2000-01-05 → 1999-12-21; baseline finish 2000-01-11 → 1999-12-27 |
| 26 | KB-1验收 | 2000-03-15 → 1999-12-21 A (-85d) | 2000-03-16 → 1999-12-22 (-85d) |  | 0% → 85% |  |  | baseline start 2000-01-05 → 1999-12-21; baseline finish 2000-01-06 → 1999-12-22 |
| 27 | SMZZ-1验收 | 2000-03-15 → 1999-12-21 A (-85d) | 2000-03-17 → 1999-12-23 (-85d) |  | 0% → 85% |  |  | baseline start 2000-01-05 → 1999-12-21; baseline finish 2000-01-07 → 1999-12-23 |
| 28 | WIY-1验收 | 2000-03-15 → 1999-12-21 A (-85d) | 2000-03-21 → 1999-12-27 A (-85d) |  | 0% → 100% | 0d → none |  | baseline start 2000-01-05 → 1999-12-21; baseline finish 2000-01-11 → 1999-12-27 |
| 29 | JBZZ-1验收 | 2000-03-15 → 1999-12-21 A (-85d) | 2000-03-20 → 1999-12-24 (-87d) |  | 0% → 85% |  |  | baseline start 2000-01-05 → 1999-12-21; baseline finish 2000-01-10 → 1999-12-24 |
| 30 | GDG-II11验收 | 2000-03-15 → 1999-12-21 A (-85d) | 2000-03-16 → 1999-12-22 (-85d) |  | 0% → 85% |  |  | baseline start 2000-01-05 → 1999-12-21; baseline finish 2000-01-06 → 1999-12-22 |
| 31 | GDL-II1验收 | 2000-03-15 → 1999-12-21 A (-85d) | 2000-03-16 → 1999-12-22 (-85d) |  | 0% → 85% |  |  | baseline start 2000-01-05 → 1999-12-21; baseline finish 2000-01-06 → 1999-12-22 |
| 32 | HF-25G验收 | 2000-03-15 → 1999-12-21 A (-85d) | 2000-03-16 → 1999-12-22 (-85d) |  | 0% → 85% |  |  | baseline start 2000-01-05 → 1999-12-21; baseline finish 2000-01-06 → 1999-12-22 |
| 33 | 武器挂架验收 | 2000-03-15 → 1999-12-21 (-85d) | 2000-03-16 → 1999-12-22 (-85d) |  |  |  |  | baseline start 2000-01-05 → 1999-12-21; baseline finish 2000-01-06 → 1999-12-22 |
| 34 | **编制文件** | 1999-05-21 → 1999-04-01 A (-50d) | 1999-07-15 → 1999-05-26 A (-50d) |  | 0% → 100% | 215d → none |  | baseline start 1999-05-21 → 1999-04-01; baseline finish 1999-07-15 → 1999-05-26 |
| 35 | 飞行员手册 | 1999-05-21 → 1999-04-01 A (-50d) | 1999-06-10 → 1999-04-21 A (-50d) |  | 0% → 100% | 215d → none |  | baseline start 1999-05-21 → 1999-04-01; baseline finish 1999-06-10 → 1999-04-21 |
| 36 | 地勤维护手册 | 1999-06-11 → 1999-04-22 A (-50d) | 1999-07-01 → 1999-05-12 A (-50d) |  | 0% → 100% | 215d → none |  | baseline start 1999-06-11 → 1999-04-22; baseline finish 1999-07-01 → 1999-05-12 |
| 37 | 试飞大纲 | 1999-07-02 → 1999-05-13 A (-50d) | 1999-07-08 → 1999-05-19 A (-50d) |  | 0% → 100% | 215d → none |  | baseline start 1999-07-02 → 1999-05-13; baseline finish 1999-07-08 → 1999-05-19 |
| 38 | 靶试大纲 | 1999-07-09 → 1999-05-20 A (-50d) | 1999-07-15 → 1999-05-26 A (-50d) |  | 0% → 100% | 215d → none |  | baseline start 1999-07-09 → 1999-05-20; baseline finish 1999-07-15 → 1999-05-26 |
| 39 | **协调工作** | 1999-07-13 → 1999-05-03 (-71d) | 2001-02-01 → 2000-08-24 (-161d) | 408d → 344d |  |  |  | baseline start 1999-07-13 → 1999-05-03; baseline finish 2000-11-23 → 2000-08-24 |
| 40 | 资源调查 | 1999-07-13 → 1999-05-03 (-71d) | 1999-07-19 → 1999-05-07 (-73d) |  |  | 161d → 144d |  | baseline start 1999-07-13 → 1999-05-03; baseline finish 1999-07-19 → 1999-05-07 |
| 41 | 组建改装团队 | 1999-07-20 → 1999-05-25 (-56d) | 1999-08-09 → 1999-06-14 (-56d) |  |  | 161d → 133d |  | baseline start 1999-07-20 → 1999-05-25; baseline finish 1999-08-09 → 1999-06-14 |
| 42 | **部队协调** | 2000-03-22 → 1999-12-17 (-96d) | 2001-02-01 → 2000-08-24 (-161d) | 227d → 180d |  |  |  | baseline start 2000-01-12 → 1999-12-17; baseline finish 2000-11-23 → 2000-08-24 |
| 43 | A团协调 | 2000-03-22 → 1999-12-17 (-96d) | 2000-03-30 → 1999-12-27 (-94d) |  |  |  | 25, 41 → 25FF, 41 | baseline start 2000-01-12 → 1999-12-17; baseline finish 2000-01-20 → 1999-12-27 |
| 44 | B团协调 | 2000-05-17 → 2000-01-28 (-110d) | 2000-05-25 → 2000-02-07 (-108d) |  |  |  | 76 → 76FF | baseline start 2000-03-08 → 2000-01-28; baseline finish 2000-03-16 → 2000-02-07 |
| 45 | C团协调 | 2000-08-23 → 2000-04-21 (-124d) | 2000-08-31 → 2000-05-01 (-122d) |  |  |  | 77 → 77FF | baseline start 2000-06-14 → 2000-04-21; baseline finish 2000-06-22 → 2000-05-01 |
| 46 | D团协调 | 2000-09-20 → 2000-05-05 (-138d) | 2000-09-28 → 2000-05-15 (-136d) |  |  |  | 45, 78 → 45, 78FF | baseline start 2000-07-12 → 2000-05-05; baseline finish 2000-07-20 → 2000-05-15 |
| 47 | E团协调 | 2000-11-01 → 2000-06-07 (-147d) | 2000-11-09 → 2000-06-15 (-147d) |  |  |  | 46, 79 → 46, 79FF | baseline start 2000-08-23 → 2000-06-07; baseline finish 2000-08-31 → 2000-06-15 |
| 48 | F团协调 | 2001-01-24 → 2000-08-16 (-161d) | 2001-02-01 → 2000-08-24 (-161d) |  |  |  | 47, 80 → 47, 80FF | baseline start 2000-11-15 → 2000-08-16; baseline finish 2000-11-23 → 2000-08-24 |
| 49 | **路线优化** | 1999-04-16 → 1999-04-01 A (-15d) | 1999-05-13 → 1999-04-28 A (-15d) |  | 0% → 100% | 203d → none |  | baseline start 1999-04-16 → 1999-04-01; baseline finish 1999-05-13 → 1999-04-28 |
| 50 | 计算各部队距离 | 1999-04-16 → 1999-04-01 A (-15d) | 1999-04-22 → 1999-04-07 A (-15d) |  | 0% → 100% | 203d → none |  | baseline start 1999-04-16 → 1999-04-01; baseline finish 1999-04-22 → 1999-04-07 |
| 51 | 计算路线 | 1999-04-23 → 1999-04-08 A (-15d) | 1999-05-06 → 1999-04-21 A (-15d) |  | 0% → 100% | 203d → none |  | baseline start 1999-04-23 → 1999-04-08; baseline finish 1999-05-06 → 1999-04-21 |
| 52 | 分析得出最优路线 | 1999-05-07 → 1999-04-22 A (-15d) | 1999-05-13 → 1999-04-28 A (-15d) |  | 0% → 100% | 203d → none |  | baseline start 1999-05-07 → 1999-04-22; baseline finish 1999-05-13 → 1999-04-28 |
| 53 | **工序优化** | 1999-06-11 → 1999-04-01 A (-71d) | 1999-07-12 → 1999-04-30 A (-73d) |  | 0% → 100% | 161d → none |  | baseline start 1999-06-11 → 1999-04-01; baseline finish 1999-07-12 → 1999-04-30 |
| 54 | 改装工序结构分解 | 1999-06-11 → 1999-04-01 A (-71d) | 1999-06-17 → 1999-04-07 A (-71d) |  | 0% → 100% | 161d → none |  | baseline start 1999-06-11 → 1999-04-01; baseline finish 1999-06-17 → 1999-04-07 |
| 55 | 建立工序逻辑关系 | 1999-06-18 → 1999-04-08 A (-71d) | 1999-06-24 → 1999-04-14 A (-71d) |  | 0% → 100% | 161d → none |  | baseline start 1999-06-18 → 1999-04-08; baseline finish 1999-06-24 → 1999-04-14 |
| 56 | 计算各工序时间 | 1999-06-25 → 1999-04-15 A (-71d) | 1999-07-01 → 1999-04-21 A (-71d) |  | 0% → 100% | 161d → none |  | baseline start 1999-06-25 → 1999-04-15; baseline finish 1999-07-01 → 1999-04-21 |
| 57 | 得出关键线路 | 1999-07-02 → 1999-04-22 A (-71d) | 1999-07-07 → 1999-04-27 A (-71d) |  | 0% → 100% | 161d → none |  | baseline start 1999-07-02 → 1999-04-22; baseline finish 1999-07-07 → 1999-04-27 |
| 58 | 进行工序优化 | 1999-07-08 → 1999-04-28 A (-71d) | 1999-07-12 → 1999-04-30 A (-73d) |  | 0% → 100% | 161d → none |  | baseline start 1999-07-08 → 1999-04-28; baseline finish 1999-07-12 → 1999-04-30 |
| 59 | **改装实施** | 2000-03-31 → 1999-12-28 (-94d) | 2001-04-12 → 2000-11-02 (-161d) | 270d → 223d |  |  |  | baseline start 2000-01-21 → 1999-12-28; baseline finish 2001-02-01 → 2000-11-02 |
| 60 | A部队改装 | 2000-03-31 → 1999-12-28 (-94d) | 2000-05-11 → 2000-02-07 (-94d) |  |  |  |  | baseline start 2000-01-21 → 1999-12-28; baseline finish 2000-03-02 → 2000-02-07 |
| 61 | B部队改装 | 2000-05-26 → 2000-02-08 (-108d) | 2000-08-17 → 2000-05-01 (-108d) |  |  |  |  | baseline start 2000-03-17 → 2000-02-08; baseline finish 2000-06-08 → 2000-05-01 |
| 62 | C部队改装 | 2000-09-01 → 2000-05-02 (-122d) | 2000-09-14 → 2000-05-15 (-122d) |  |  |  |  | baseline start 2000-06-23 → 2000-05-02; baseline finish 2000-07-06 → 2000-05-15 |
| 63 | D部队改装 | 2000-09-29 → 2000-05-16 (-136d) | 2000-10-26 → 2000-06-12 (-136d) |  |  |  |  | baseline start 2000-07-21 → 2000-05-16; baseline finish 2000-08-17 → 2000-06-12 |
| 64 | E部队改装 | 2000-11-10 → 2000-06-16 (-147d) | 2001-01-18 → 2000-08-24 (-147d) |  |  |  |  | baseline start 2000-09-01 → 2000-06-16; baseline finish 2000-11-09 → 2000-08-24 |
| 65 | F部队改装 | 2001-02-02 → 2000-08-25 (-161d) | 2001-04-12 → 2000-11-02 (-161d) |  |  |  |  | baseline start 2000-11-24 → 2000-08-25; baseline finish 2001-02-01 → 2000-11-02 |
| 66 | **改装结束** | 2001-04-18 → 2000-11-03 (-166d) | 2001-04-18 → 2000-11-03 (-166d) |  |  |  |  | baseline start 2001-02-07 → 2000-11-03; baseline finish 2001-02-07 → 2000-11-03 |
| 67 | 技术绩效 | 2001-04-18 → 2000-11-03 (-166d) | 2001-04-18 → 2000-11-03 (-166d) |  |  |  |  | baseline start 2001-02-07 → 2000-11-03; baseline finish 2001-02-07 → 2000-11-03 |
| 68 | 成本绩效 | 2001-04-18 → 2000-11-03 (-166d) | 2001-04-18 → 2000-11-03 (-166d) |  |  |  |  | baseline start 2001-02-07 → 2000-11-03; baseline finish 2001-02-07 → 2000-11-03 |
| 69 | 进度计划绩效 | 2001-04-18 → 2000-11-03 (-166d) | 2001-04-18 → 2000-11-03 (-166d) |  |  |  |  | baseline start 2001-02-07 → 2000-11-03; baseline finish 2001-02-07 → 2000-11-03 |
| 70 | 客户联系 | 2001-04-18 → 2000-11-03 (-166d) | 2001-04-18 → 2000-11-03 (-166d) |  |  |  |  | baseline start 2001-02-07 → 2000-11-03; baseline finish 2001-02-07 → 2000-11-03 |

| ID | Task | Start | Finish | Duration | Complete | Total float | Predecessors | Other |
| --- | --- | --- | --- | --- | --- | --- | --- | --- |
| 71 | 团队联系 | 2001-04-18 → 2000-11-03 (-166d) | 2001-04-18 → 2000-11-03 (-166d) |  |  |  |  | baseline start 2001-02-07 → 2000-11-03; baseline finish 2001-02-07 → 2000-11-03 |
| 72 | 交流 | 2001-04-18 → 2000-11-03 (-166d) | 2001-04-18 → 2000-11-03 (-166d) |  |  |  |  | baseline start 2001-02-07 → 2000-11-03; baseline finish 2001-02-07 → 2000-11-03 |
| 73 | 识别问题与解决问题 | 2001-04-18 → 2000-11-03 (-166d) | 2001-04-18 → 2000-11-03 (-166d) |  |  |  |  | baseline start 2001-02-07 → 2000-11-03; baseline finish 2001-02-07 → 2000-11-03 |
| 74 | 对未来项目的建议 | 2001-04-18 → 2000-11-03 (-166d) | 2001-04-18 → 2000-11-03 (-166d) |  |  |  |  | baseline start 2001-02-07 → 2000-11-03; baseline finish 2001-02-07 → 2000-11-03 |
| 75 | **机务、飞行员培训** | 2000-05-12 → 2000-02-03 (-99d) | 2001-04-17 → 2000-11-02 (-166d) | 243d → 196d |  |  |  | baseline start 2000-03-03 → 2000-02-03; baseline finish 2001-02-06 → 2000-11-02 |
| 76 | A团培训 | 2000-05-12 → 2000-02-03 (-99d) | 2000-05-16 → 2000-02-07 (-99d) |  |  |  | 34, 60 → 34, 60FF | baseline start 2000-03-03 → 2000-02-03; baseline finish 2000-03-07 → 2000-02-07 |
| 77 | B团培训 | 2000-08-18 → 2000-04-27 (-113d) | 2000-08-22 → 2000-05-01 (-113d) |  |  |  | 61 → 61FF | baseline start 2000-06-09 → 2000-04-27; baseline finish 2000-06-13 → 2000-05-01 |
| 78 | C团培训 | 2000-09-15 → 2000-05-11 (-127d) | 2000-09-19 → 2000-05-15 (-127d) |  |  |  | 62 → 62FF | baseline start 2000-07-07 → 2000-05-11; baseline finish 2000-07-11 → 2000-05-15 |
| 79 | D团培训 | 2000-10-27 → 2000-06-13 (-136d) | 2000-10-31 → 2000-06-15 (-138d) |  |  |  |  | baseline start 2000-08-18 → 2000-06-13; baseline finish 2000-08-22 → 2000-06-15 |
| 80 | E团培训 | 2001-01-19 → 2000-08-22 (-150d) | 2001-01-23 → 2000-08-24 (-152d) |  |  |  | 64 → 64FF | baseline start 2000-11-10 → 2000-08-22; baseline finish 2000-11-14 → 2000-08-24 |
| 81 | F团培训 | 2001-04-13 → 2000-10-31 (-164d) | 2001-04-17 → 2000-11-02 (-166d) |  |  |  | 65 → 65FF | baseline start 2001-02-02 → 2000-10-31; baseline finish 2001-02-06 → 2000-11-02 |
| 82 | 武器挂架交付 | 1999-05-19 → 1999-05-04 A (-15d) | 1999-09-21 → 1999-12-17 (+87d) | 90d → 164d | 0% → 9% | 125d → 1d |  | baseline start 1999-05-19 → 1999-05-04; baseline finish 1999-05-19 → 1999-09-06 |
| 83 | **国内成品交付** | 1999-06-09 → 1999-05-25 A (-15d) | 2000-03-14 → 1999-12-20 (-85d) | 200d → 150d | 0% → 87% |  |  | baseline start 1999-06-09 → 1999-05-25; baseline finish 2000-01-04 → 1999-12-20 |
| 84 | KB-1交付 | 1999-06-09 → 1999-05-25 A (-15d) | 2000-03-14 → 1999-12-20 (-85d) | 200d → 150d | 0% → 85% |  |  | baseline start 1999-06-09 → 1999-05-25; baseline finish 2000-01-04 → 1999-12-20 |
| 85 | SMZZ-1交付 | 1999-06-09 → 1999-05-25 A (-15d) | 2000-03-14 → 1999-12-20 (-85d) | 200d → 150d | 0% → 85% |  |  | baseline start 1999-06-09 → 1999-05-25; baseline finish 2000-01-04 → 1999-12-20 |
| 86 | JBZZ-1交付 | 1999-06-09 → 1999-05-25 A (-15d) | 2000-03-14 → 1999-12-20 (-85d) | 200d → 150d | 0% → 85% |  |  | baseline start 1999-06-09 → 1999-05-25; baseline finish 2000-01-04 → 1999-12-20 |
| 87 | WJY-1交付 | 1999-06-09 → 1999-05-25 A (-15d) | 2000-03-14 → 1999-12-20 A (-85d) | 200d → 150d | 0% → 100% | 0d → none |  | baseline start 1999-06-09 → 1999-05-25; baseline finish 2000-01-04 → 1999-12-20 |
| 88 | GDG-II11交付 | 1999-06-09 → 1999-05-25 A (-15d) | 2000-03-14 → 1999-12-20 (-85d) | 200d → 150d | 0% → 85% |  |  | baseline start 1999-06-09 → 1999-05-25; baseline finish 2000-01-04 → 1999-12-20 |
| 89 | GDL-II1交付 | 1999-06-09 → 1999-05-25 A (-15d) | 2000-03-14 → 1999-12-20 (-85d) | 200d → 150d | 0% → 85% |  |  | baseline start 1999-06-09 → 1999-05-25; baseline finish 2000-01-04 → 1999-12-20 |
| 90 | HF-25G交付 | 1999-06-09 → 1999-05-25 A (-15d) | 2000-03-14 → 1999-12-20 (-85d) | 200d → 150d | 0% → 85% |  |  | baseline start 1999-06-09 → 1999-05-25; baseline finish 2000-01-04 → 1999-12-20 |
